# Josephine - Schedule Draft

Schedule from MS Project, 2026-03-16 to 2027-10-29.

## Calendars

- Standard: Mon-Fri 08:00-12:00, 13:00-17:00; Sat-Sun off. Exceptions (off unless hours are given): 2026-05-25 (Memorial Day), 2026-07-03 (Independence Day), 2026-09-07 (Labor Day), 2026-11-26 to 2026-11-27 (Thanksgiving), 2026-12-25 (Christmas).

## Schedule

| ID | WBS | Task | Type | Duration | Start | Finish | Predecessors | Total slack | Free slack | Constraint |
| --- | --- | --- | --- | --- | --- | --- | --- | --- | --- | --- |
| 1 | 1 | Contract Issuance | milestone, manual | 1d | 2026-03-16 | 2026-03-16 |  |  |  |  |
| 2 | 2 | **Submittals and Procurement** |  | 339d | 2026-03-24 | 2027-07-20 |  | 74d |  |  |
| 3 | 2.1 | **Priority Submittals** |  | 339d | 2026-03-24 | 2027-07-20 |  | 74d |  |  |
| 4 | 2.1.1 | Windows / Patio Doors Submittals |  | 3w | 2026-03-24 | 2026-04-13 | 1FS+1w | 307d | 202d |  |
| 5 | 2.1.2 | Storefront systems Submittals |  | 3w | 2026-03-24 | 2026-04-13 | 1FS+1w | 307d | 202d |  |
| 6 | 2.1.3 | ADA Lift Submittal |  | 3w | 2026-03-24 | 2026-04-13 | 1FS+1w | 267d | 189d |  |
| 7 | 2.1.4 | Elevator Submittals |  | 3w | 2026-03-24 | 2026-04-13 | 1FS+1w | 257d | 179d |  |
| 8 | 2.1.5 | Structural Steel Submittals |  | 3w | 2026-03-24 | 2026-04-13 | 1FS+1w | 172d |  |  |
| 9 | 2.1.6 | Generator Submittals |  | 3w | 2026-03-24 | 2026-04-13 | 1FS+1w | 247d | 169d |  |
| 10 | 2.1.7 | Truss Submittals |  | 3w | 2026-03-24 | 2026-04-13 | 1FS+1w | 317d | 132d |  |
| 11 | 2.1.8 | Steel Stair Shop Submittal |  | 3w | 2026-03-24 | 2026-04-13 | 1FS+1w | 327d | 127d |  |
| 12 | 2.1.9 | Rebar Shop Drawing |  | 3w | 2026-03-24 | 2026-04-13 | 1FS+1w | 122d |  |  |
| 13 | 2.1.10 | Concrete & Gypcrete Mix Design Submittal |  | 3w | 2026-03-24 | 2026-04-13 | 1FS+1w | 122d |  | start no earlier than 2026-03-23 |
| 14 | 2.1.11 | Electrical Gear & MDP Submittals |  | 3w | 2026-03-24 | 2026-04-13 | 1FS+1w | 287d | 117d |  |
| 15 | 2.1.12 | Fire Suppression Shop Drawings |  | 3w | 2026-03-24 | 2026-04-13 | 1FS+1w | 92d |  |  |
| 16 | 2.1.13 | **Priority Procurement** |  | 157d | 2026-12-10 | 2027-07-20 |  | 74d |  |  |
| 17 | 2.1.13.1 | Electrical Gear & MPD Procurement |  | 12w | 2026-12-10 | 2027-03-05 | 44SF, 14 | 171d |  |  |
| 18 | 2.1.13.2 | Truss Procurement |  | 6w | 2027-01-01 | 2027-02-12 | 42SF-2w, 10 | 186d |  |  |
| 19 | 2.1.13.3 | Steel Stair Fabrication |  | 4w | 2026-12-24 | 2027-01-22 | 37SF, 11 | 201d |  |  |
| 20 | 2.1.13.4 | Generator Procurement |  | 20w | 2027-03-02 | 2027-07-20 | 172SF, 9 | 74d |  |  |
| 21 | 2.1.13.5 | Elevator Procurement |  | 18w | 2027-03-16 | 2027-07-20 | 171SF, 7 | 74d |  |  |
| 22 | 2.1.13.6 | ADA Lift Procurement |  | 16w | 2027-03-30 | 2027-07-20 | 173SF, 6 | 74d |  |  |
| 23 | 2.1.13.7 | Windows / Patio Door Procurement |  | 8w | 2027-04-16 | 2027-06-11 | 60SF, 4 | 101d |  |  |
| 24 | 2.1.13.8 | Storefront Procurement |  | 8w | 2027-04-16 | 2027-06-11 | 61SF, 5 | 101d |  |  |
| 25 | 3 | Existing Building Tenant Moveout | milestone, manual | 1d | 2026-07-17 | 2026-07-20 | 28SF-2w |  |  |  |

| ID | WBS | Task | Type | Duration | Start | Finish | Predecessors | Total slack | Free slack | Constraint |
| --- | --- | --- | --- | --- | --- | --- | --- | --- | --- | --- |
| 26 | 4 | **Construction** |  | 321d | 2026-08-03 | 2027-10-29 |  | 0d |  |  |
| 27 | 4.1 | **Site Development and Demo** |  | 45d | 2026-08-03 | 2026-10-05 |  | 0d |  |  |
| 28 | 4.1.1 | Mobiliziation, SWPP, Temp Fencing | manual | 1w | 2026-08-03 | 2026-08-07 |  |  |  |  |
| 29 | 4.1.2 | Site Utility Safe-Off | milestone | 1w | 2026-08-03 | 2026-08-07 | 28SS | 0d |  |  |
| 30 | 4.1.3 | 1-story Structure Demo |  | 2w | 2026-08-10 | 2026-08-21 | 28, 29 | 0d |  |  |
| 31 | 4.1.4 | Shoring |  | 2w | 2026-08-10 | 2026-08-21 | 28 | 306d |  |  |
| 32 | 4.1.5 | 2-Story Selective Demo |  | 3w | 2026-08-24 | 2026-09-14 | 30, 29 | 291d |  |  |
| 33 | 4.1.6 | Site Work & Underground Utilities |  | 6w | 2026-08-24 | 2026-10-05 | 30, 15 | 0d |  |  |
| 34 | 4.2 | **MEPLS Underground and Foundations** |  | 100d | 2026-10-06 | 2027-02-25 |  | 0d |  |  |
| 35 | 4.2.1 | Foundations & Elevator Pit |  | 6w | 2026-10-06 | 2027-01-21 | 33, 13, 12 | 0d |  | start no earlier than 2026-07-27 |
| 36 | 4.2.2 | Underground MEPLS Rough |  | 3w | 2027-01-01 | 2027-01-21 | 33, 35FF | 196d | 45d |  |
| 37 | 4.2.3 | Elevator Shaft and Stair Towers |  | 3w | 2027-01-22 | 2027-02-11 | 35 | 0d |  |  |
| 38 | 4.2.4 | SoG |  | 2w | 2027-02-12 | 2027-02-25 | 37 | 0d |  |  |
| 39 | 4.2.5 | Termicide |  | 1d | 2027-02-12 | 2027-02-12 | 38SS | 185d |  |  |
| 40 | 4.3 | **Rough Construction** |  | 150d | 2027-02-26 | 2027-09-23 |  | 0d |  |  |
| 41 | 4.3.1 | 1st Floor Podium |  | 4w | 2027-02-26 | 2027-03-25 | 38, 8 | 0d |  |  |
| 42 | 4.3.2 | Historical Framing & Sheathing |  | 2w | 2027-02-26 | 2027-03-11 | 41SS | 10d | 0d |  |
| 43 | 4.3.3 | U-TX Install |  | 1w | 2027-03-26 | 2027-04-01 | 36, 41 | 151d |  |  |
| 44 | 4.3.4 | 1st floor MEPLS Rough |  | 2w | 2027-03-05 | 2027-03-18 | 41SS+1w | 161d | 0d |  |
| 45 | 4.3.5 | Historical MEPLS Rough |  | 2w | 2027-03-12 | 2027-03-25 | 42 | 156d |  |  |
| 46 | 4.3.6 | 2nd Floor Framing & Sheathing |  | 2w | 2027-03-26 | 2027-04-08 | 41, 42 | 0d |  |  |
| 47 | 4.3.7 | 3rd Floor Framing & Sheathing |  | 2w | 2027-04-09 | 2027-04-22 | 46 | 0d |  |  |
| 48 | 4.3.8 | Shoring Removal | milestone | 1w | 2027-04-23 | 2027-04-29 | 47 | 121d | 15d |  |
| 49 | 4.3.9 | 4th Floor Framing & Sheathing |  | 2w | 2027-04-23 | 2027-05-06 | 47 | 0d |  |  |
| 50 | 4.3.10 | 5th Floor Framing & Sheathing |  | 2w | 2027-05-07 | 2027-05-20 | 49 | 0d |  |  |
| 51 | 4.3.11 | 1st floor framing and Sheathing |  | 2w | 2027-05-21 | 2027-06-03 | 50, 48 | 106d |  |  |
| 52 | 4.3.12 | Roof Truss & Sheathing |  | 1w | 2027-05-21 | 2027-05-27 | 50 | 0d |  |  |
| 53 | 4.3.13 | Framing Punch-out |  | 2w | 2027-05-14 | 2027-05-27 | 52FF | 111d |  |  |
| 54 | 4.3.14 | Roof MEPLS Rough |  | 1w | 2027-05-28 | 2027-06-03 | 52 | 0d |  |  |
| 55 | 4.3.15 | Roof Membrane |  | 2w | 2027-06-04 | 2027-06-17 | 54 | 0d |  |  |
| 56 | 4.3.16 | Gypcrete Topping & Patio Concrete |  | 1.5w | 2027-06-18 | 2027-06-29 | 55 | 0d |  |  |
| 57 | 4.3.17 | Traffic Coating |  | 2w | 2027-07-06 | 2027-07-20 | 56FS+5d | 73.5d |  |  |
| 58 | 4.3.18 | Patio Door Install |  | 2w | 2027-06-25 | 2027-07-08 | 56SS+1w | 0d |  |  |
| 59 | 4.3.19 | Waterproofing |  | 2w | 2027-05-28 | 2027-06-10 | 52 | 26d | 0d |  |
| 60 | 4.3.20 | Window Installation |  | 2w | 2027-06-11 | 2027-06-24 | 59 | 26d | 0d |  |
| 61 | 4.3.21 | Storefront Systems |  | 2w | 2027-06-11 | 2027-06-24 | 60SS | 91d | 0d |  |
| 62 | 4.3.22 | Brick & Stucco |  | 6w | 2027-06-18 | 2027-07-29 | 60SS+1w | 26d | 0d |  |
| 63 | 4.3.23 | Exterior Paint |  | 1.5mo | 2027-07-30 | 2027-09-09 | 62 | 26d | 0d |  |
| 64 | 4.3.24 | Balcony Railing |  | 2w | 2027-09-10 | 2027-09-23 | 63 | 26d |  |  |
| 65 | 4.3.25 | 2nd Floor MEPLS Rough |  | 1.5w | 2027-04-23 | 2027-05-04 | 49SS | 99d | 0d |  |
| 66 | 4.3.26 | 3rd floor MEPLS Rough |  | 1.5w | 2027-05-04 | 2027-05-13 | 65 | 99d | 0d |  |
| 67 | 4.3.27 | 4th Floor MEPLS Rough |  | 1.5w | 2027-05-14 | 2027-05-25 | 66 | 99d | 0d |  |
| 68 | 4.3.28 | 5th Floor MEPLS Rough |  | 1.5w | 2027-05-25 | 2027-06-03 | 67 | 99d | 0d |  |
| 69 | 4.3.29 | Power Release | milestone | 1w | 2027-06-08 | 2027-06-14 | 68FS+2d | 99d |  |  |

| ID | WBS | Task | Type | Duration | Start | Finish | Predecessors | Total slack | Free slack |
| --- | --- | --- | --- | --- | --- | --- | --- | --- | --- |
| 70 | 4.4 | **Finish Construction** |  | 81d | 2027-07-09 | 2027-10-29 |  | 0d |  |
| 71 | 4.4.1 | 1st Floor Insulation |  | 3d | 2027-07-09 | 2027-07-13 | 58 | 0d |  |
| 72 | 4.4.2 | 1st Floor Drywall H/T/F |  | 2w | 2027-07-14 | 2027-07-27 | 71 | 28d | 0d |
| 73 | 4.4.3 | 1st Floor Paint Prime & 1st Coat |  | 3d | 2027-07-28 | 2027-07-30 | 72 | 28d | 0d |
| 74 | 4.4.4 | 1st Floor MEPLS Equipment Install |  | 1w | 2027-08-02 | 2027-08-06 | 73 | 60d |  |
| 75 | 4.4.5 | 1st Floor Cabinets & Countertops |  | 1w | 2027-08-02 | 2027-08-06 | 73 | 28d | 0d |
| 76 | 4.4.6 | 1st Floor Flooring & Tile |  | 2w | 2027-08-09 | 2027-08-20 | 75 | 28d | 0d |
| 77 | 4.4.7 | 1st Floor Doors/Frames/Hardware |  | 1w | 2027-08-19 | 2027-08-25 | 75FS+8d | 47d |  |
| 78 | 4.4.8 | 1st Floor Base & Finish Carpentry |  | 1w | 2027-08-23 | 2027-08-27 | 76 | 28d | 0d |
| 79 | 4.4.9 | 1st Floor Paint: 2nd & Finish Coat |  | 1w | 2027-08-25 | 2027-08-31 | 78SS+2d | 28d | 0d |
| 80 | 4.4.10 | Lobby Finishes |  | 3w | 2027-09-01 | 2027-09-21 | 79 | 28d |  |
| 81 | 4.4.11 | 1st Floor MEPLS Trimout |  | 1w | 2027-08-27 | 2027-09-02 | 79SS+2d | 33d | 0d |
| 82 | 4.4.12 | 1st Floor Appliances |  | 3d | 2027-09-03 | 2027-09-07 | 81 | 38d |  |
| 83 | 4.4.13 | 1st Floor Div-10 & Specialties |  | 1w | 2027-08-31 | 2027-09-06 | 81SS+2d | 33d | 0d |
| 84 | 4.4.14 | 1st Floor Equipment Start-up |  | 3d | 2027-09-02 | 2027-09-06 | 83FF | 33d | 0d |
| 85 | 4.4.15 | 1st Floor Punch & Owner Acceptance | milestone | 1w | 2027-09-08 | 2027-09-14 | 84FS+1d | 33d |  |
| 86 | 4.4.16 | 1st Floor Historical Insulation |  | 3d | 2027-07-09 | 2027-07-13 | 58 | 0d |  |
| 87 | 4.4.17 | 1st Floor Historical Drywall H/T/F |  | 2w | 2027-07-14 | 2027-07-27 | 86 | 33d | 0d |
| 88 | 4.4.18 | 1st Floor Historical Paint Prime & 1st Coat |  | 3d | 2027-07-28 | 2027-07-30 | 87 | 33d | 0d |
| 89 | 4.4.19 | 1st Floor Historical MEPLS Equipment Install |  | 1w | 2027-08-02 | 2027-08-06 | 88 | 60d |  |
| 90 | 4.4.20 | 1st Floor Historical Cabinets & Countertops |  | 1w | 2027-08-02 | 2027-08-06 | 88 | 33d | 0d |
| 91 | 4.4.21 | 1st Floor Historical Flooring & Tile |  | 2w | 2027-08-09 | 2027-08-20 | 90 | 33d | 0d |
| 92 | 4.4.22 | 1st Floor Historical Doors/Frames/Hardware |  | 1w | 2027-08-19 | 2027-08-25 | 90FS+8d | 47d |  |
| 93 | 4.4.23 | 1st Floor Historical Base & Finish Carpentry |  | 1w | 2027-08-23 | 2027-08-27 | 91 | 33d | 0d |
| 94 | 4.4.24 | 1st Floor Historical Paint: 2nd & Finish Coat |  | 1w | 2027-08-25 | 2027-08-31 | 93SS+2d | 33d | 0d |
| 95 | 4.4.25 | 1st Floor Historical MEPLS Trimout |  | 1w | 2027-08-27 | 2027-09-02 | 94SS+2d | 33d | 0d |
| 96 | 4.4.26 | 1st Floor Historical Appliances |  | 3d | 2027-09-03 | 2027-09-07 | 95 | 38d |  |
| 97 | 4.4.27 | 1st Floor Historical Div-10 & Specialties |  | 1w | 2027-08-31 | 2027-09-06 | 95SS+2d | 33d | 0d |
| 98 | 4.4.28 | 1st Floor Historical Equipment Start-up |  | 3d | 2027-09-02 | 2027-09-06 | 97FF | 33d | 0d |
| 99 | 4.4.29 | 1st Floor Historical Punch & Owner Acceptance | milestone | 1w | 2027-09-08 | 2027-09-14 | 98FS+1d | 33d |  |
| 100 | 4.4.30 | 2nd Floor Insulation |  | 3d | 2027-07-14 | 2027-07-16 | 71, 86 | 0d |  |
| 101 | 4.4.31 | 2nd Floor Drywall H/T/F |  | 2w | 2027-07-20 | 2027-08-02 | 100FS+1d | 32d | 0d |
| 102 | 4.4.32 | 2nd Floor Paint Prime & 1st Coat |  | 3d | 2027-08-03 | 2027-08-05 | 101 | 32d | 0d |
| 103 | 4.4.33 | 2nd Floor MEPLS Equipment Install |  | 1w | 2027-08-06 | 2027-08-12 | 102 | 56d |  |
| 104 | 4.4.34 | 2nd Floor Cabinets & Countertops |  | 1w | 2027-08-06 | 2027-08-12 | 102 | 32d | 0d |
| 105 | 4.4.35 | 2nd Floor Flooring & Tile |  | 2w | 2027-08-10 | 2027-08-23 | 104SS+2d | 32d | 0d |
| 106 | 4.4.36 | 2nd Floor Doors/Frames/Hardware |  | 1w | 2027-08-20 | 2027-08-26 | 105SS+8d | 46d |  |
| 107 | 4.4.37 | 2nd Floor Base & Finish Carpentry |  | 1w | 2027-08-24 | 2027-08-30 | 105 | 32d | 0d |
| 108 | 4.4.38 | 2nd Floor Paint: 2nd & Finish Coat |  | 1w | 2027-08-26 | 2027-09-01 | 107SS+2d | 32d | 0d |
| 109 | 4.4.39 | 2nd Floor MEPLS Trimout |  | 1w | 2027-08-30 | 2027-09-03 | 108SS+2d | 32d | 0d |
| 110 | 4.4.40 | 2nd Floor Appliances |  | 3d | 2027-09-06 | 2027-09-08 | 109 | 37d |  |
| 111 | 4.4.41 | 2nd Floor Div-10 & Specialties |  | 1w | 2027-09-01 | 2027-09-07 | 109SS+2d | 32d | 0d |
| 112 | 4.4.42 | 2nd Floor Equipment Start-up |  | 2d | 2027-09-06 | 2027-09-07 | 111FF | 32d | 0d |
| 113 | 4.4.43 | 2nd Floor Punch & Owner Acceptance | milestone | 1w | 2027-09-09 | 2027-09-15 | 112FS+1d | 32d |  |
| 114 | 4.4.44 | 2nd Floor Historical Insulation |  | 3d | 2027-07-14 | 2027-07-16 | 71, 86 | 0d |  |
| 115 | 4.4.45 | 2nd Floor Historical Drywall H/T/F |  | 2w | 2027-07-20 | 2027-08-02 | 114FS+1d | 32d | 0d |
| 116 | 4.4.46 | 2nd Floor Historical Paint Prime & 1st Coat |  | 3d | 2027-08-03 | 2027-08-05 | 115 | 32d | 0d |
| 117 | 4.4.47 | 2nd Floor Historical MEPLS Equipment Install |  | 1w | 2027-08-06 | 2027-08-12 | 116 | 56d |  |
| 118 | 4.4.48 | 2nd Floor Historical Cabinets & Countertops |  | 1w | 2027-08-06 | 2027-08-12 | 116 | 32d | 0d |
| 119 | 4.4.49 | 2nd Floor Historical Flooring & Tile |  | 2w | 2027-08-10 | 2027-08-23 | 118SS+2d | 32d | 0d |
| 120 | 4.4.50 | 2nd Floor Historical Doors/Frames/Hardware |  | 1w | 2027-08-20 | 2027-08-26 | 119SS+8d | 46d |  |
| 121 | 4.4.51 | 2nd Floor Historical Base & Finish Carpentry |  | 1w | 2027-08-24 | 2027-08-30 | 119 | 32d | 0d |
| 122 | 4.4.52 | 2nd Floor Historical Paint: 2nd & Finish Coat |  | 1w | 2027-08-26 | 2027-09-01 | 121SS+2d | 32d | 0d |
| 123 | 4.4.53 | 2nd Floor Historical MEPLS Trimout |  | 1w | 2027-08-30 | 2027-09-03 | 122SS+2d | 32d | 0d |
| 124 | 4.4.54 | 2nd Floor Historical Appliances |  | 3d | 2027-09-06 | 2027-09-08 | 123 | 37d |  |
| 125 | 4.4.55 | 2nd Floor Historical Div-10 & Specialties |  | 1w | 2027-09-01 | 2027-09-07 | 123SS+2d | 32d | 0d |
| 126 | 4.4.56 | 2nd Floor Historical Equipment Start-up |  | 2d | 2027-09-06 | 2027-09-07 | 125FF | 32d | 0d |
| 127 | 4.4.57 | 2nd Floor Historical Punch & Owner Acceptance | milestone | 1w | 2027-09-09 | 2027-09-15 | 126FS+1d | 32d |  |
| 128 | 4.4.58 | 3rd Floor Insulation |  | 2d | 2027-07-19 | 2027-07-20 | 100, 114 | 27d | 0d |
| 129 | 4.4.59 | 3rd Floor Drywall H/T/F |  | 2w | 2027-07-22 | 2027-08-04 | 128FS+1d | 27d | 0d |
| 130 | 4.4.60 | 3rd Floor Paint Prime & 1st Coat |  | 3d | 2027-08-05 | 2027-08-09 | 129 | 27d | 0d |
| 131 | 4.4.61 | 3rd Floor MEPLS Equipment Install |  | 1w | 2027-08-10 | 2027-08-16 | 130 | 54d |  |
| 132 | 4.4.62 | 3rd Floor Cabinets & Countertops |  | 1w | 2027-08-10 | 2027-08-16 | 130 | 27d | 0d |
| 133 | 4.4.63 | 3rd Floor Flooring & Tile |  | 2w | 2027-08-12 | 2027-08-25 | 132SS+2d | 27d | 0d |
| 134 | 4.4.64 | 3rd Floor Doors/Frames/Hardware |  | 1w | 2027-08-24 | 2027-08-30 | 133SS+8d | 44d |  |
| 135 | 4.4.65 | 3rd Floor Base & Finish Carpentry |  | 1w | 2027-08-26 | 2027-09-01 | 133 | 27d | 0d |
| 136 | 4.4.66 | 3rd Floor Paint: 2nd & Finish Coat |  | 1w | 2027-08-30 | 2027-09-03 | 135SS+2d | 27d | 0d |
| 137 | 4.4.67 | 3rd Floor MEPLS Trimout |  | 1w | 2027-09-01 | 2027-09-07 | 136SS+2d | 27d | 0d |
| 138 | 4.4.68 | 3rd Floor Appliances |  | 3d | 2027-09-03 | 2027-09-07 | 137FF | 27d | 0d |
| 139 | 4.4.69 | 3rd Floor Div-10 & Specialties |  | 1w | 2027-09-08 | 2027-09-14 | 138 | 27d | 0d |

| ID | WBS | Task | Type | Duration | Start | Finish | Predecessors | Total slack | Free slack |
| --- | --- | --- | --- | --- | --- | --- | --- | --- | --- |
| 140 | 4.4.70 | 3rd Floor Equipment Start-up |  | 2d | 2027-09-13 | 2027-09-14 | 139FF | 27d | 0d |
| 141 | 4.4.71 | 3rd Floor Punch & Owner Acceptance | milestone | 1w | 2027-09-16 | 2027-09-22 | 140FS+1d | 27d |  |
| 142 | 4.4.72 | 4th Floor Insulation |  | 2d | 2027-07-19 | 2027-07-20 | 100, 114 | 0d |  |
| 143 | 4.4.73 | 4th Floor Drywall H/T/F |  | 2w | 2027-07-22 | 2027-08-04 | 142FS+1d | 27d | 0d |
| 144 | 4.4.74 | 4th Floor Paint Prime & 1st Coat |  | 3d | 2027-08-05 | 2027-08-09 | 143 | 27d | 0d |
| 145 | 4.4.75 | 4th Floor MEPLS Equipment Install |  | 1w | 2027-08-10 | 2027-08-16 | 144 | 54d |  |
| 146 | 4.4.76 | 4th Floor Cabinets & Countertops |  | 1w | 2027-08-10 | 2027-08-16 | 144 | 27d | 0d |
| 147 | 4.4.77 | 4th Floor Flooring & Tile |  | 2w | 2027-08-12 | 2027-08-25 | 146SS+2d | 27d | 0d |
| 148 | 4.4.78 | 4th Floor Doors/Frames/Hardware |  | 1w | 2027-08-24 | 2027-08-30 | 147SS+8d | 44d |  |
| 149 | 4.4.79 | 4th Floor Base & Finish Carpentry |  | 1w | 2027-08-26 | 2027-09-01 | 147 | 27d | 0d |
| 150 | 4.4.80 | 4th Floor Paint: 2nd & Finish Coat |  | 1w | 2027-08-30 | 2027-09-03 | 149SS+2d | 27d | 0d |
| 151 | 4.4.81 | 4th Floor MEPLS Trimout |  | 1w | 2027-09-01 | 2027-09-07 | 150SS+2d | 27d | 0d |
| 152 | 4.4.82 | 4th Floor Appliances |  | 3d | 2027-09-03 | 2027-09-07 | 151FF | 27d | 0d |
| 153 | 4.4.83 | 4th Floor Div-10 & Specialties |  | 1w | 2027-09-08 | 2027-09-14 | 152 | 27d | 0d |
| 154 | 4.4.84 | 4th Floor Equipment Start-up |  | 2d | 2027-09-13 | 2027-09-14 | 153FF | 27d | 0d |
| 155 | 4.4.85 | 4th Floor Punch & Owner Acceptance | milestone | 1w | 2027-09-16 | 2027-09-22 | 154FS+1d | 27d |  |
| 156 | 4.4.86 | 5th Floor Insulation |  | 3d | 2027-07-21 | 2027-07-23 | 142 | 0d |  |
| 157 | 4.4.87 | 5th Floor Drywall H/T/F |  | 2w | 2027-07-27 | 2027-08-09 | 156FS+1d | 0d |  |
| 158 | 4.4.88 | 5th Floor Paint Prime & 1st Coat |  | 3d | 2027-08-10 | 2027-08-12 | 157 | 0d |  |
| 159 | 4.4.89 | 5th Floor MEPLS Equipment Install |  | 1w | 2027-08-13 | 2027-08-19 | 158 | 51d |  |
| 160 | 4.4.90 | 5th Floor Cabinets & Countertops |  | 1w | 2027-08-13 | 2027-08-19 | 158 | 0d |  |
| 161 | 4.4.91 | 5th Floor Flooring & Tile |  | 2w | 2027-08-17 | 2027-08-30 | 160SS+2d | 0d |  |
| 162 | 4.4.92 | 5th Floor Doors/Frames/Hardware |  | 1w | 2027-08-27 | 2027-09-02 | 161SS+8d | 0d |  |
| 163 | 4.4.93 | 5th Floor Base & Finish Carpentry |  | 1w | 2027-09-03 | 2027-09-09 | 162 | 0d |  |
| 164 | 4.4.94 | 5th Floor Paint: 2nd & Finish Coat |  | 1w | 2027-09-07 | 2027-09-13 | 163SS+2d | 0d |  |
| 165 | 4.4.95 | 5th Floor MEPLS Trimout |  | 1w | 2027-09-17 | 2027-09-23 | 164SS+8d | 0d |  |
| 166 | 4.4.96 | 5th Floor Appliances |  | 3d | 2027-09-21 | 2027-09-23 | 165FF | 0d |  |
| 167 | 4.4.97 | 5th Floor Div-10 & Specialties |  | 1w | 2027-09-24 | 2027-09-30 | 166 | 0d |  |
| 168 | 4.4.98 | 5th Floor Equipment Start-up |  | 2d | 2027-09-29 | 2027-09-30 | 167FF | 0d |  |
| 169 | 4.4.99 | 5th Floor Punch & Owner Acceptance |  | 1w | 2027-10-04 | 2027-10-08 | 168FS+1d | 15d |  |
| 170 | 4.4.100 | TaB & Building Commission |  | 2w | 2027-10-04 | 2027-10-15 | 168FS+1d | 0d |  |
| 171 | 4.4.101 | Elevator Install | milestone | 4w | 2027-07-20 | 2027-08-16 | 101SS, 115SS | 54d | 0d |
| 172 | 4.4.102 | Generator Installation | milestone | 2w | 2027-07-20 | 2027-08-02 | 171SS | 64d | 0d |
| 173 | 4.4.103 | ADA Lift |  | 1w | 2027-07-20 | 2027-07-26 | 171SS | 69d | 0d |
| 174 | 4.4.104 | Hardscape, Asphalt, Paving & Striping |  | 4w | 2027-07-30 | 2027-08-26 | 62 | 31d | 0d |
| 175 | 4.4.105 | Misc. Metals |  | 3w | 2027-08-06 | 2027-08-26 | 174FF | 46d |  |
| 176 | 4.4.106 | Landscape & Irrigation |  | 3w | 2027-08-13 | 2027-09-02 | 174SS+2w | 31d | 0d |
| 177 | 4.4.107 | Fencing, Gates & Bollard |  | 2w | 2027-08-20 | 2027-09-02 | 176FF | 31d |  |
| 178 | 4.4.108 | Building Punch & Owner Acceptance | milestone | 2w | 2027-10-18 | 2027-10-29 | 170, 177 | 0d |  |
