# Josephine - Schedule Draft

Schedule from MS Project, 2026-03-16 to 2027-08-27.

## Calendars

- Standard: Mon-Fri 08:00-12:00, 13:00-17:00; Sat-Sun off. Exceptions (off unless hours are given): 2026-05-25 (Memorial Day), 2026-07-03 (Independence Day), 2026-09-07 (Labor Day), 2026-11-26 to 2026-11-27 (Thanksgiving), 2026-12-25 (Christmas).

## Schedule

| ID | WBS | Task | Type | Duration | Start | Finish | Predecessors | Total slack | Free slack | Constraint |
| --- | --- | --- | --- | --- | --- | --- | --- | --- | --- | --- |
| 1 | 1 | Contract Issuance | milestone, manual | 1d | 2026-03-16 | 2026-03-16 |  |  |  |  |
| 2 | 2 | **Submittals and Procurement** |  | 299d | 2026-03-24 | 2027-05-25 |  | 69d |  |  |
| 3 | 2.1 | **Priority Submittals** |  | 299d | 2026-03-24 | 2027-05-25 |  | 69d |  |  |
| 4 | 2.1.1 | Windows / Patio Doors Submittals |  | 3w | 2026-03-24 | 2026-04-13 | 1FS+1w | 313d | 217d |  |
| 5 | 2.1.2 | Storefront systems Submittals |  | 3w | 2026-03-24 | 2026-04-13 | 1FS+1w | 313d | 217d |  |
| 6 | 2.1.3 | ADA Lift Submittal |  | 3w | 2026-03-24 | 2026-04-13 | 1FS+1w | 273d | 204d |  |
| 7 | 2.1.4 | Elevator Submittals |  | 3w | 2026-03-24 | 2026-04-13 | 1FS+1w | 263d | 194d |  |
| 8 | 2.1.5 | Generator Submittals |  | 3w | 2026-03-24 | 2026-04-13 | 1FS+1w | 253d | 184d |  |
| 9 | 2.1.6 | Structural Steel Submittals |  | 3w | 2026-03-24 | 2026-04-13 | 1FS+1w | 182d |  |  |
| 10 | 2.1.7 | Steel Stair Shop Submittal |  | 3w | 2026-03-24 | 2026-04-13 | 1FS+1w | 333d | 132d |  |
| 11 | 2.1.8 | Electrical Gear & MDP Submittals |  | 3w | 2026-03-24 | 2026-04-13 | 1FS+1w | 293d | 127d |  |
| 12 | 2.1.9 | Rebar Shop Drawing |  | 3w | 2026-03-24 | 2026-04-13 | 1FS+1w | 122d |  |  |
| 13 | 2.1.10 | Concrete & Gypcrete Mix Design Submittal |  | 3w | 2026-03-24 | 2026-04-13 | 1FS+1w | 122d |  | start no earlier than 2026-03-23 |
| 14 | 2.1.11 | Truss Submittals |  | 3w | 2026-03-24 | 2026-04-13 | 1FS+1w | 293d | 112d |  |
| 15 | 2.1.12 | Fire Suppression Shop Drawings |  | 3w | 2026-03-24 | 2026-04-13 | 1FS+1w | 92d |  |  |
| 16 | 2.1.13 | **Priority Procurement** |  | 172d | 2026-09-22 | 2027-05-25 |  | 69d |  |  |
| 17 | 2.1.13.1 | Electrical Gear & MPD Procurement |  | 12w | 2026-10-13 | 2027-01-08 | 45SF, 11 | 166d |  |  |
| 18 | 2.1.13.2 | Truss Procurement |  | 12w | 2026-09-22 | 2026-12-17 | 43SF-2w, 14 | 181d |  |  |
| 19 | 2.1.13.3 | Generator Procurement |  | 20w | 2027-01-05 | 2027-05-25 | 175SF, 8 | 69d |  |  |
| 20 | 2.1.13.4 | Elevator Procurement |  | 18w | 2027-01-19 | 2027-05-25 | 174SF, 7 | 69d |  |  |
| 21 | 2.1.13.5 | ADA Lift Procurement |  | 16w | 2027-02-02 | 2027-05-25 | 176SF, 6 | 69d |  |  |
| 22 | 2.1.13.6 | Windows / Patio Door Procurement |  | 8w | 2027-02-19 | 2027-04-16 | 62SF, 4 | 96d |  |  |
| 23 | 2.1.13.7 | Storefront Procurement |  | 8w | 2027-02-19 | 2027-04-16 | 63SF, 5 | 96d |  |  |
| 24 | 2.1.13.8 | Steel Stair Fabrication |  | 4w | 2026-10-20 | 2026-11-17 | 37SF, 10 | 201d |  |  |
| 25 | 3 | Existing Building Tenant Moveout | milestone | 1d | 2026-07-17 | 2026-07-20 | 28SF-2w | 286d |  |  |

| ID | WBS | Task | Type | Duration | Start | Finish | Predecessors | Total slack | Free slack |
| --- | --- | --- | --- | --- | --- | --- | --- | --- | --- |
| 26 | 4 | **Construction** |  | 276d | 2026-08-03 | 2027-08-27 |  | 0d |  |
| 27 | 4.1 | **Site Development and Demo** |  | 45d | 2026-08-03 | 2026-10-05 |  | 0d |  |
| 28 | 4.1.1 | Mobiliziation, SWPP, Temp Fencing | manual | 1w | 2026-08-03 | 2026-08-07 |  |  |  |
| 29 | 4.1.2 | Site Utility Safe-Off | milestone | 1w | 2026-08-03 | 2026-08-07 | 28SS | 0d |  |
| 30 | 4.1.3 | 1-story Structure Demo |  | 2w | 2026-08-10 | 2026-08-21 | 28, 29 | 0d |  |
| 31 | 4.1.4 | Shoring | milestone | 2w | 2026-08-10 | 2026-08-21 | 28 | 261d |  |
| 32 | 4.1.5 | 2-Story Selective Demo |  | 3w | 2026-08-24 | 2026-09-14 | 30, 29 | 246d |  |
| 33 | 4.1.6 | Site Work & Underground Utilities |  | 6w | 2026-08-24 | 2026-10-05 | 30, 15 | 0d |  |
| 34 | 4.2 | **MEPLS Underground and Foundations** |  | 75d | 2026-10-06 | 2027-01-21 |  | 0d |  |
| 35 | 4.2.1 | Foundations & Elevator Pit |  | 6w | 2026-10-06 | 2026-11-16 | 33, 13, 12 | 0d |  |
| 36 | 4.2.2 | Underground MEPLS Rough |  | 3w | 2026-10-27 | 2026-11-16 | 33, 35FF | 186d | 50d |
| 37 | 4.2.3 | Elevator Shaft and Stair Towers |  | 4w | 2026-11-17 | 2026-12-16 | 35 | 0d |  |
| 38 | 4.2.4 | SoG |  | 2w | 2026-12-17 | 2026-12-31 | 37 | 0d |  |
| 39 | 4.2.5 | Termicide |  | 1d | 2026-12-17 | 2026-12-17 | 38SS | 180d |  |
| 40 | 4.2.6 | Steel Erection |  | 3w | 2027-01-01 | 2027-01-21 | 38 | 156d |  |
| 41 | 4.3 | **Rough Construction** |  | 150d | 2027-01-01 | 2027-07-29 |  | 0d |  |
| 42 | 4.3.1 | 1st Floor Podium |  | 4w | 2027-01-01 | 2027-01-28 | 38, 9 | 0d |  |
| 43 | 4.3.2 | Historical Framing & Sheathing |  | 2w | 2027-01-01 | 2027-01-14 | 42SS | 10d | 0d |
| 44 | 4.3.3 | U-TX Install |  | 2w | 2027-01-29 | 2027-02-11 | 36, 42 | 136d | 42d |
| 45 | 4.3.4 | 1st floor MEPLS Rough |  | 2w | 2027-01-08 | 2027-01-21 | 42SS+1w | 156d | 0d |
| 46 | 4.3.5 | Historical MEPLS Rough |  | 2w | 2027-01-15 | 2027-01-28 | 43 | 151d |  |
| 47 | 4.3.6 | 2nd Floor Framing & Sheathing |  | 2w | 2027-01-29 | 2027-02-11 | 42, 43 | 0d |  |
| 48 | 4.3.7 | 3rd Floor Framing & Sheathing |  | 2w | 2027-02-12 | 2027-02-25 | 47 | 0d |  |
| 49 | 4.3.8 | Shoring Removal | milestone | 1w | 2027-02-26 | 2027-03-04 | 48 | 40d | 15d |
| 50 | 4.3.9 | 4th Floor Framing & Sheathing |  | 2w | 2027-02-26 | 2027-03-11 | 48 | 0d |  |
| 51 | 4.3.10 | 5th Floor Framing & Sheathing |  | 2w | 2027-03-12 | 2027-03-25 | 50 | 0d |  |
| 52 | 4.3.11 | 1st Floor Framing & Sheathing |  | 2w | 2027-03-26 | 2027-04-08 | 51, 49 | 25d |  |
| 53 | 4.3.12 | Roof Truss & Sheathing |  | 1w | 2027-03-26 | 2027-04-01 | 51 | 0d |  |
| 54 | 4.3.13 | Stair Install in all Stair Towers |  | 1.5w | 2027-03-26 | 2027-04-06 | 51 | 103.5d |  |
| 55 | 4.3.14 | Framing Punch-out |  | 2w | 2027-03-19 | 2027-04-01 | 53FF | 106d |  |
| 56 | 4.3.15 | Roof MEPLS Rough |  | 1w | 2027-04-02 | 2027-04-08 | 53 | 0d |  |
| 57 | 4.3.16 | Roof Membrane |  | 2w | 2027-04-09 | 2027-04-22 | 56 | 0d |  |
| 58 | 4.3.17 | Gypcrete Topping & Patio Concrete & Poured Pans |  | 2w | 2027-04-23 | 2027-05-06 | 57 | 0d |  |
| 59 | 4.3.18 | Traffic Coating |  | 2w | 2027-05-14 | 2027-05-27 | 58FS+5d | 66d |  |
| 60 | 4.3.19 | Patio Door Install |  | 2w | 2027-04-30 | 2027-05-13 | 58SS+1w | 0d |  |
| 61 | 4.3.20 | Waterproofing |  | 2w | 2027-04-02 | 2027-04-15 | 53 | 6d | 0d |
| 62 | 4.3.21 | Window Installation |  | 2w | 2027-04-16 | 2027-04-29 | 61 | 6d | 0d |
| 63 | 4.3.22 | Storefront Systems |  | 2w | 2027-04-16 | 2027-04-29 | 62SS | 86d | 0d |
| 64 | 4.3.23 | Brick & Stucco |  | 6w | 2027-04-23 | 2027-06-03 | 62SS+1w | 6d | 0d |
| 65 | 4.3.24 | Exterior Paint |  | 1.5mo | 2027-06-04 | 2027-07-15 | 64 | 6d | 0d |
| 66 | 4.3.25 | Balcony Railing |  | 2w | 2027-07-16 | 2027-07-29 | 65 | 21d |  |
| 67 | 4.3.26 | 2nd Floor MEPLS Rough |  | 1.5w | 2027-02-26 | 2027-03-09 | 50SS | 94d | 0d |
| 68 | 4.3.27 | 3rd floor MEPLS Rough |  | 1.5w | 2027-03-09 | 2027-03-18 | 67 | 94d | 0d |
| 69 | 4.3.28 | 4th Floor MEPLS Rough |  | 1.5w | 2027-03-19 | 2027-03-30 | 68 | 94d | 0d |
| 70 | 4.3.29 | 5th Floor MEPLS Rough |  | 1.5w | 2027-03-30 | 2027-04-08 | 69 | 94d | 0d |
| 71 | 4.3.30 | Power Release | milestone | 1w | 2027-04-13 | 2027-04-19 | 70FS+2d, 44 | 94d |  |

| ID | WBS | Task | Type | Duration | Start | Finish | Predecessors | Total slack | Free slack |
| --- | --- | --- | --- | --- | --- | --- | --- | --- | --- |
| 72 | 4.4 | **Finish Construction** |  | 76d | 2027-05-14 | 2027-08-27 |  | 0d |  |
| 73 | 4.4.1 | 1st Floor Insulation |  | 3d | 2027-05-14 | 2027-05-18 | 60, 52 | 0d |  |
| 74 | 4.4.2 | 1st Floor Drywall H/T/F |  | 2w | 2027-05-19 | 2027-06-01 | 73 | 13d | 0d |
| 75 | 4.4.3 | 1st Floor Paint Prime & 1st Coat |  | 3d | 2027-06-02 | 2027-06-04 | 74 | 13d | 0d |
| 76 | 4.4.4 | 1st Floor MEPLS Equipment Install |  | 1w | 2027-06-07 | 2027-06-11 | 75 | 55d |  |
| 77 | 4.4.5 | 1st Floor Cabinets & Countertops |  | 1w | 2027-06-07 | 2027-06-11 | 75 | 13d | 0d |
| 78 | 4.4.6 | 1st Floor Flooring & Tile |  | 2w | 2027-06-14 | 2027-06-25 | 77 | 13d | 0d |
| 79 | 4.4.7 | 1st Floor Doors/Frames/Hardware |  | 1w | 2027-06-24 | 2027-06-30 | 77FS+8d | 42d |  |
| 80 | 4.4.8 | 1st Floor Base & Finish Carpentry |  | 1w | 2027-06-28 | 2027-07-02 | 78 | 13d | 0d |
| 81 | 4.4.9 | 1st Floor Paint: 2nd & Finish Coat |  | 1w | 2027-06-30 | 2027-07-06 | 80SS+2d | 13d | 0d |
| 82 | 4.4.10 | Lobby Finishes |  | 4w | 2027-07-07 | 2027-08-03 | 81 | 13d | 0d |
| 83 | 4.4.11 | Lobby Punch & Owner Acceptance | milestone, manual | 1w | 2027-08-04 | 2027-08-10 | 82 |  |  |
| 84 | 4.4.12 | 1st Floor MEPLS Trimout |  | 1w | 2027-07-02 | 2027-07-08 | 81SS+2d | 28d | 0d |
| 85 | 4.4.13 | 1st Floor Appliances |  | 3d | 2027-07-09 | 2027-07-13 | 84 | 33d |  |
| 86 | 4.4.14 | 1st Floor Div-10 & Specialties |  | 1w | 2027-07-06 | 2027-07-12 | 84SS+2d | 28d | 0d |
| 87 | 4.4.15 | 1st Floor Equipment Start-up |  | 3d | 2027-07-08 | 2027-07-12 | 86FF | 28d | 0d |
| 88 | 4.4.16 | 1st Floor Punch & Owner Acceptance | milestone | 1w | 2027-07-14 | 2027-07-20 | 87FS+1d | 28d |  |
| 89 | 4.4.17 | 1st Floor Historical Insulation |  | 3d | 2027-05-14 | 2027-05-18 | 60 | 0d |  |
| 90 | 4.4.18 | 1st Floor Historical Drywall H/T/F |  | 2w | 2027-05-19 | 2027-06-01 | 89 | 28d | 0d |
| 91 | 4.4.19 | 1st Floor Historical Paint Prime & 1st Coat |  | 3d | 2027-06-02 | 2027-06-04 | 90 | 28d | 0d |
| 92 | 4.4.20 | 1st Floor Historical MEPLS Equipment Install |  | 1w | 2027-06-07 | 2027-06-11 | 91 | 55d |  |
| 93 | 4.4.21 | 1st Floor Historical Cabinets & Countertops |  | 1w | 2027-06-07 | 2027-06-11 | 91 | 28d | 0d |
| 94 | 4.4.22 | 1st Floor Historical Flooring & Tile |  | 2w | 2027-06-14 | 2027-06-25 | 93 | 28d | 0d |
| 95 | 4.4.23 | 1st Floor Historical Doors/Frames/Hardware |  | 1w | 2027-06-24 | 2027-06-30 | 93FS+8d | 42d |  |
| 96 | 4.4.24 | 1st Floor Historical Base & Finish Carpentry |  | 1w | 2027-06-28 | 2027-07-02 | 94 | 28d | 0d |
| 97 | 4.4.25 | 1st Floor Historical Paint: 2nd & Finish Coat |  | 1w | 2027-06-30 | 2027-07-06 | 96SS+2d | 28d | 0d |
| 98 | 4.4.26 | 1st Floor Historical MEPLS Trimout |  | 1w | 2027-07-02 | 2027-07-08 | 97SS+2d | 28d | 0d |
| 99 | 4.4.27 | 1st Floor Historical Appliances |  | 3d | 2027-07-09 | 2027-07-13 | 98 | 33d |  |
| 100 | 4.4.28 | 1st Floor Historical Div-10 & Specialties |  | 1w | 2027-07-06 | 2027-07-12 | 98SS+2d | 28d | 0d |
| 101 | 4.4.29 | 1st Floor Historical Equipment Start-up |  | 3d | 2027-07-08 | 2027-07-12 | 100FF | 28d | 0d |
| 102 | 4.4.30 | 1st Floor Historical Punch & Owner Acceptance | milestone | 1w | 2027-07-14 | 2027-07-20 | 101FS+1d | 28d |  |
| 103 | 4.4.31 | 2nd Floor Insulation |  | 3d | 2027-05-19 | 2027-05-21 | 73, 89 | 0d |  |
| 104 | 4.4.32 | 2nd Floor Drywall H/T/F |  | 2w | 2027-05-25 | 2027-06-07 | 103FS+1d | 27d | 0d |
| 105 | 4.4.33 | 2nd Floor Paint Prime & 1st Coat |  | 3d | 2027-06-08 | 2027-06-10 | 104 | 27d | 0d |
| 106 | 4.4.34 | 2nd Floor MEPLS Equipment Install |  | 1w | 2027-06-11 | 2027-06-17 | 105 | 51d |  |
| 107 | 4.4.35 | 2nd Floor Cabinets & Countertops |  | 1w | 2027-06-11 | 2027-06-17 | 105 | 27d | 0d |
| 108 | 4.4.36 | 2nd Floor Flooring & Tile |  | 2w | 2027-06-15 | 2027-06-28 | 107SS+2d | 27d | 0d |
| 109 | 4.4.37 | 2nd Floor Doors/Frames/Hardware |  | 1w | 2027-06-25 | 2027-07-01 | 108SS+8d | 41d |  |
| 110 | 4.4.38 | 2nd Floor Base & Finish Carpentry |  | 1w | 2027-06-29 | 2027-07-05 | 108 | 27d | 0d |
| 111 | 4.4.39 | 2nd Floor Paint: 2nd & Finish Coat |  | 1w | 2027-07-01 | 2027-07-07 | 110SS+2d | 27d | 0d |
| 112 | 4.4.40 | 2nd Floor MEPLS Trimout |  | 1w | 2027-07-05 | 2027-07-09 | 111SS+2d | 27d | 0d |
| 113 | 4.4.41 | 2nd Floor Appliances |  | 3d | 2027-07-12 | 2027-07-14 | 112 | 32d |  |
| 114 | 4.4.42 | 2nd Floor Div-10 & Specialties |  | 1w | 2027-07-07 | 2027-07-13 | 112SS+2d | 27d | 0d |
| 115 | 4.4.43 | 2nd Floor Equipment Start-up |  | 2d | 2027-07-12 | 2027-07-13 | 114FF | 27d | 0d |
| 116 | 4.4.44 | 2nd Floor Punch & Owner Acceptance | milestone | 1w | 2027-07-15 | 2027-07-21 | 115FS+1d | 27d |  |
| 117 | 4.4.45 | 2nd Floor Historical Insulation |  | 3d | 2027-05-19 | 2027-05-21 | 73, 89 | 0d |  |
| 118 | 4.4.46 | 2nd Floor Historical Drywall H/T/F |  | 2w | 2027-05-25 | 2027-06-07 | 117FS+1d | 27d | 0d |
| 119 | 4.4.47 | 2nd Floor Historical Paint Prime & 1st Coat |  | 3d | 2027-06-08 | 2027-06-10 | 118 | 27d | 0d |
| 120 | 4.4.48 | 2nd Floor Historical MEPLS Equipment Install |  | 1w | 2027-06-11 | 2027-06-17 | 119 | 51d |  |
| 121 | 4.4.49 | 2nd Floor Historical Cabinets & Countertops |  | 1w | 2027-06-11 | 2027-06-17 | 119 | 27d | 0d |
| 122 | 4.4.50 | 2nd Floor Historical Flooring & Tile |  | 2w | 2027-06-15 | 2027-06-28 | 121SS+2d | 27d | 0d |
| 123 | 4.4.51 | 2nd Floor Historical Doors/Frames/Hardware |  | 1w | 2027-06-25 | 2027-07-01 | 122SS+8d | 41d |  |
| 124 | 4.4.52 | 2nd Floor Historical Base & Finish Carpentry |  | 1w | 2027-06-29 | 2027-07-05 | 122 | 27d | 0d |
| 125 | 4.4.53 | 2nd Floor Historical Paint: 2nd & Finish Coat |  | 1w | 2027-07-01 | 2027-07-07 | 124SS+2d | 27d | 0d |
| 126 | 4.4.54 | 2nd Floor Historical MEPLS Trimout |  | 1w | 2027-07-05 | 2027-07-09 | 125SS+2d | 27d | 0d |
| 127 | 4.4.55 | 2nd Floor Historical Appliances |  | 3d | 2027-07-12 | 2027-07-14 | 126 | 32d |  |
| 128 | 4.4.56 | 2nd Floor Historical Div-10 & Specialties |  | 1w | 2027-07-07 | 2027-07-13 | 126SS+2d | 27d | 0d |
| 129 | 4.4.57 | 2nd Floor Historical Equipment Start-up |  | 2d | 2027-07-12 | 2027-07-13 | 128FF | 27d | 0d |
| 130 | 4.4.58 | 2nd Floor Historical Punch & Owner Acceptance | milestone | 1w | 2027-07-15 | 2027-07-21 | 129FS+1d | 27d |  |
| 131 | 4.4.59 | 3rd Floor Insulation |  | 2d | 2027-05-24 | 2027-05-25 | 103, 117 | 22d | 0d |
| 132 | 4.4.60 | 3rd Floor Drywall H/T/F |  | 2w | 2027-05-27 | 2027-06-09 | 131FS+1d | 22d | 0d |
| 133 | 4.4.61 | 3rd Floor Paint Prime & 1st Coat |  | 3d | 2027-06-10 | 2027-06-14 | 132 | 22d | 0d |
| 134 | 4.4.62 | 3rd Floor MEPLS Equipment Install |  | 1w | 2027-06-15 | 2027-06-21 | 133 | 49d |  |
| 135 | 4.4.63 | 3rd Floor Cabinets & Countertops |  | 1w | 2027-06-15 | 2027-06-21 | 133 | 22d | 0d |
| 136 | 4.4.64 | 3rd Floor Flooring & Tile |  | 2w | 2027-06-17 | 2027-06-30 | 135SS+2d | 22d | 0d |
| 137 | 4.4.65 | 3rd Floor Doors/Frames/Hardware |  | 1w | 2027-06-29 | 2027-07-05 | 136SS+8d | 39d |  |
| 138 | 4.4.66 | 3rd Floor Base & Finish Carpentry |  | 1w | 2027-07-01 | 2027-07-07 | 136 | 22d | 0d |
| 139 | 4.4.67 | 3rd Floor Paint: 2nd & Finish Coat |  | 1w | 2027-07-05 | 2027-07-09 | 138SS+2d | 22d | 0d |
| 140 | 4.4.68 | 3rd Floor MEPLS Trimout |  | 1w | 2027-07-07 | 2027-07-13 | 139SS+2d | 22d | 0d |
| 141 | 4.4.69 | 3rd Floor Appliances |  | 3d | 2027-07-09 | 2027-07-13 | 140FF | 22d | 0d |

| ID | WBS | Task | Type | Duration | Start | Finish | Predecessors | Total slack | Free slack |
| --- | --- | --- | --- | --- | --- | --- | --- | --- | --- |
| 142 | 4.4.70 | 3rd Floor Div-10 & Specialties |  | 1w | 2027-07-14 | 2027-07-20 | 141 | 22d | 0d |
| 143 | 4.4.71 | 3rd Floor Equipment Start-up |  | 2d | 2027-07-19 | 2027-07-20 | 142FF | 22d | 0d |
| 144 | 4.4.72 | 3rd Floor Punch & Owner Acceptance | milestone | 1w | 2027-07-22 | 2027-07-28 | 143FS+1d | 22d |  |
| 145 | 4.4.73 | 4th Floor Insulation |  | 2d | 2027-05-24 | 2027-05-25 | 103, 117 | 0d |  |
| 146 | 4.4.74 | 4th Floor Drywall H/T/F |  | 2w | 2027-05-27 | 2027-06-09 | 145FS+1d | 22d | 0d |
| 147 | 4.4.75 | 4th Floor Paint Prime & 1st Coat |  | 3d | 2027-06-10 | 2027-06-14 | 146 | 22d | 0d |
| 148 | 4.4.76 | 4th Floor MEPLS Equipment Install |  | 1w | 2027-06-15 | 2027-06-21 | 147 | 49d |  |
| 149 | 4.4.77 | 4th Floor Cabinets & Countertops |  | 1w | 2027-06-15 | 2027-06-21 | 147 | 22d | 0d |
| 150 | 4.4.78 | 4th Floor Flooring & Tile |  | 2w | 2027-06-17 | 2027-06-30 | 149SS+2d | 22d | 0d |
| 151 | 4.4.79 | 4th Floor Doors/Frames/Hardware |  | 1w | 2027-06-29 | 2027-07-05 | 150SS+8d | 39d |  |
| 152 | 4.4.80 | 4th Floor Base & Finish Carpentry |  | 1w | 2027-07-01 | 2027-07-07 | 150 | 22d | 0d |
| 153 | 4.4.81 | 4th Floor Paint: 2nd & Finish Coat |  | 1w | 2027-07-05 | 2027-07-09 | 152SS+2d | 22d | 0d |
| 154 | 4.4.82 | 4th Floor MEPLS Trimout |  | 1w | 2027-07-07 | 2027-07-13 | 153SS+2d | 22d | 0d |
| 155 | 4.4.83 | 4th Floor Appliances |  | 3d | 2027-07-09 | 2027-07-13 | 154FF | 22d | 0d |
| 156 | 4.4.84 | 4th Floor Div-10 & Specialties |  | 1w | 2027-07-14 | 2027-07-20 | 155 | 22d | 0d |
| 157 | 4.4.85 | 4th Floor Equipment Start-up |  | 2d | 2027-07-19 | 2027-07-20 | 156FF | 22d | 0d |
| 158 | 4.4.86 | 4th Floor Punch & Owner Acceptance | milestone | 1w | 2027-07-22 | 2027-07-28 | 157FS+1d | 22d |  |
| 159 | 4.4.87 | 5th Floor Insulation |  | 3d | 2027-05-26 | 2027-05-28 | 145 | 0d |  |
| 160 | 4.4.88 | 5th Floor Drywall H/T/F |  | 2w | 2027-06-01 | 2027-06-14 | 159FS+1d | 0d |  |
| 161 | 4.4.89 | 5th Floor Paint Prime & 1st Coat |  | 3d | 2027-06-15 | 2027-06-17 | 160 | 0d |  |
| 162 | 4.4.90 | 5th Floor MEPLS Equipment Install |  | 1w | 2027-06-18 | 2027-06-24 | 161 | 46d |  |
| 163 | 4.4.91 | 5th Floor Cabinets & Countertops |  | 1w | 2027-06-18 | 2027-06-24 | 161 | 0d |  |
| 164 | 4.4.92 | 5th Floor Flooring & Tile |  | 2w | 2027-06-22 | 2027-07-05 | 163SS+2d | 0d |  |
| 165 | 4.4.93 | 5th Floor Doors/Frames/Hardware |  | 1w | 2027-07-02 | 2027-07-08 | 164SS+8d | 0d |  |
| 166 | 4.4.94 | 5th Floor Base & Finish Carpentry |  | 1w | 2027-07-09 | 2027-07-15 | 165 | 0d |  |
| 167 | 4.4.95 | 5th Floor Paint: 2nd & Finish Coat |  | 1w | 2027-07-13 | 2027-07-19 | 166SS+2d | 0d |  |
| 168 | 4.4.96 | 5th Floor MEPLS Trimout |  | 1w | 2027-07-23 | 2027-07-29 | 167SS+8d | 0d |  |
| 169 | 4.4.97 | 5th Floor Appliances |  | 3d | 2027-07-27 | 2027-07-29 | 168FF | 0d |  |
| 170 | 4.4.98 | 5th Floor Div-10 & Specialties |  | 1w | 2027-07-30 | 2027-08-05 | 169 | 0d |  |
| 171 | 4.4.99 | 5th Floor Equipment Start-up |  | 2d | 2027-08-04 | 2027-08-05 | 170FF | 0d |  |
| 172 | 4.4.100 | 5th Floor Punch & Owner Acceptance |  | 1w | 2027-08-09 | 2027-08-13 | 171FS+1d | 10d |  |
| 173 | 4.4.101 | TaB & Building Commission |  | 1w | 2027-08-09 | 2027-08-13 | 171FS+1d | 0d |  |
| 174 | 4.4.102 | Elevator Install | milestone | 4w | 2027-05-25 | 2027-06-21 | 104SS, 118SS | 49d | 0d |
| 175 | 4.4.103 | Generator Installation | milestone | 2w | 2027-05-25 | 2027-06-07 | 174SS | 59d | 0d |
| 176 | 4.4.104 | ADA Lift |  | 1w | 2027-05-25 | 2027-05-31 | 174SS | 64d | 0d |
| 177 | 4.4.105 | Hardscape, Asphalt, Pavers & Striping |  | 5w | 2027-07-16 | 2027-08-19 | 65 | 6d | 0d |
| 178 | 4.4.106 | Misc. Metals |  | 3w | 2027-07-30 | 2027-08-19 | 177FF | 6d |  |
| 179 | 4.4.107 | Landscape & Irrigation |  | 3w | 2027-07-30 | 2027-08-19 | 177SS+2w | 6d | 0d |
| 180 | 4.4.108 | Fencing, Gates & Bollard |  | 2w | 2027-08-06 | 2027-08-19 | 179FF | 6d |  |
| 181 | 4.4.109 | Building Punch & Owner Acceptance | milestone | 2w | 2027-08-16 | 2027-08-27 | 173 | 0d |  |
